# WEMS

How a schedule from MS Project changed from version to version. A marks actual dates.

## Version 1 (saved 2010-12-19)

| ID | WBS | Task | Duration | Start | Finish | Predecessors | Total float | Constraint |
| --- | --- | --- | --- | --- | --- | --- | --- | --- |
| 1 | 1 | **EMS 系统Web 端** | 11d? | 2010-12-22 | 2011-01-05 |  | 0d |  |
| 2 | 1.1 | **用户管理** | 11d? | 2010-12-22 | 2011-01-05 |  | 0d |  |
| 3 |  | 用户部门新增 | 3d? | 2010-12-22 | 2010-12-24 |  | 2d | start no earlier than 2010-12-22 |
| 4 |  | 用户新增 | 4d? | 2010-12-22 | 2010-12-27 |  | 0d | start no earlier than 2010-12-22 |
| 5 |  | 用户删除/失效 | 3d | 2010-12-22 | 2010-12-24 |  | 5d | start no earlier than 2010-12-22 |
| 6 |  | 用户信息维护 | 4d | 2010-12-28 | 2010-12-31 | 4 | 0d |  |
| 7 |  | 用户角色添加/删除 | 3d | 2010-12-27 | 2010-12-29 | 3 | 2d |  |
| 8 |  | 角色创建 | 3d | 2010-12-27 | 2010-12-29 | 5 | 5d |  |
| 9 |  | 角色删除/失效 | 3d | 2010-12-30 | 2011-01-03 | 7 | 2d |  |
| 10 |  | 角色信息维护 | 3d | 2011-01-03 | 2011-01-05 | 6 | 0d |  |
| 11 |  | 角色实体添加/删除 | 3d | 2010-12-22 | 2010-12-24 |  | 4d |  |
| 12 |  | 角色设备添加/删除/失效 | 4d | 2010-12-27 | 2010-12-30 | 11 | 4d |  |

## Version 2 (saved 2010-12-19)

Last finish stays 2011-01-05.

Added:

| ID | Task | Duration | Start | Finish | Predecessors | Resources |
| --- | --- | --- | --- | --- | --- | --- |
| 11 | 部门信息维护 | 3d? | 2010-12-30 | 2011-01-03 | 8 | 袁云龙 |

## Version 3 (saved 2010-12-19)

Last finish stays 2011-01-05.

Removed: 9 角色删除/失效

Changed:

| ID | Task | Start | Finish | Duration | Total float | Other |
| --- | --- | --- | --- | --- | --- | --- |
| 8 | 角色创建,角色删除/失效 |  | 2010-12-29 → 2010-12-31 (+2d) | 3d → 5d | 5d → 0d | was named 角色创建 |
| 10 | 部门信息维护 | 2010-12-30 → 2011-01-03 (+4d) | 2011-01-03 → 2011-01-05 (+2d) |  | 2d → 0d |  |

## Version 4 (saved 2010-12-22)

Last finish stays 2011-01-05.

Changed:

| ID | Task | Start | Complete |
| --- | --- | --- | --- |
| 1 | **EMS 系统Web 端** | 2010-12-22 A | 0% → 2% |
| 2 | **用户管理** | 2010-12-22 A | 0% → 2% |
| 11 | 角色实体添加/删除 | 2010-12-22 A | 0% → 20% |

## Version 5 (saved 2010-12-29)

Last finish stays 2011-01-05. Complete tasks 0 → 4.

Changed:

| ID | Task | Start | Finish | Complete | Total float | Other |
| --- | --- | --- | --- | --- | --- | --- |
| 1 | **EMS 系统Web 端** |  |  | 2% → 62% |  |  |
| 2 | **用户管理** |  |  | 2% → 62% |  |  |
| 4 | 用户新增 | 2010-12-22 A | 2010-12-27 A | 0% → 100% | 0d → none |  |
| 6 | 用户信息维护 | 2010-12-28 A | 2010-12-31 A | 0% → 100% | 0d → none |  |
| 8 | 角色创建,角色删除/失效 | 2010-12-27 A |  | 0% → 89% |  |  |
| 9 | 角色信息维护 | 2011-01-03 A |  | 0% → 70% |  |  |
| 10 | 部门信息维护 |  |  |  |  | resources 袁云龙 → 况浩 |
| 11 | 角色实体添加/删除 |  | 2010-12-24 A | 20% → 100% | 4d → none |  |
| 12 | 角色设备添加/删除/失效 | 2010-12-27 A | 2010-12-30 A | 0% → 100% | 4d → none |  |

## Version 6 (saved 2010-12-31)

Last finish stays 2011-01-05. Complete tasks 4 → 7.

Changed:

| ID | Task | Start | Finish | Complete | Total float |
| --- | --- | --- | --- | --- | --- |
| 1 | **EMS 系统Web 端** |  |  | 62% → 74% |  |
| 2 | **用户管理** |  |  | 62% → 74% |  |
| 7 | 用户角色添加/删除 | 2010-12-27 A | 2010-12-29 A | 0% → 100% | 5d → none |
| 8 | 角色创建,角色删除/失效 |  | 2010-12-31 A | 89% → 100% | 0d → none |
| 9 | 角色信息维护 |  | 2011-01-05 A | 70% → 100% | 0d → none |

## Version 7 (saved 2011-01-05)

Last finish 2011-01-05 → 2011-01-14 (+9d). Complete tasks 7 → 8.

Added:

| ID | Task | Duration | Start | Finish | Predecessors | Constraint | Resources |
| --- | --- | --- | --- | --- | --- | --- | --- |
| 13 | **页面管理** | 8d | 2011-01-06 | 2011-01-14 |  |  |  |
| 14 | 子系统维护 | 3d | 2011-01-06 | 2011-01-08 |  | start no earlier than 2011-01-06 | 袁云龙 |
| 15 | 普通配置模板页面新增 | 4d | 2011-01-06 | 2011-01-10 |  | start no earlier than 2011-01-06 | 胡欣 |
| 16 | 普通配置模板页面维护 | 4d | 2011-01-08 | 2011-01-12 |  | start no earlier than 2011-01-08 | 况浩 |
| 17 | 普通配置页面模板组件 | 4d | 2011-01-11 | 2011-01-14 | 15 | start no earlier than 2011-01-05 | 袁云龙; 胡欣 |
| 18 | 临时配置页面数据引擎配置 | 4d | 2011-01-06 | 2011-01-10 |  | start no earlier than 2011-01-06 | 张长风 |

Changed:

| ID | Task | Start | Finish | Duration | Complete | Total float |
| --- | --- | --- | --- | --- | --- | --- |
| 1 | **EMS 系统Web 端** |  | 2011-01-05 → 2011-01-14 (+9d) | 11d? → 19d? | 74% → 54% |  |
| 2 | **用户管理** |  |  |  | 74% → 83% | 0d → 8d |
| 10 | 部门信息维护 | 2011-01-03 A | 2011-01-05 A |  | 0% → 100% | 0d → none |

## Version 8 (saved 2011-01-19)

Note of the change: 6.4 ok

Last finish stays 2011-01-14. Complete tasks 8 → 11.

Changed:

| ID | Task | Start | Finish | Complete | Total float |
| --- | --- | --- | --- | --- | --- |
| 1 | **EMS 系统Web 端** |  |  | 54% → 74% |  |
| 13 | **页面管理** | 2011-01-06 A |  | 0% → 58% |  |
| 14 | 子系统维护 | 2011-01-06 A | 2011-01-08 A | 0% → 100% | 5d → none |
| 15 | 普通配置模板页面新增 | 2011-01-06 A | 2011-01-10 A | 0% → 100% | 0d → none |
| 17 | 普通配置页面模板组件 | 2011-01-11 A | 2011-01-14 A | 0% → 100% | 0d → none |
